# lab_2_3

Schedule from MS Project, 2026-03-02 to 2026-07-29, costs in ₽.
Команда разработчиков из 16 человек занимается созданием карты города на основе собственного модуля отображения. Проект должен быть завершен в течение 6 месяцев. Бюджет проекта: 50 000 рублей

## Calendars

- Стандартный: Mon-Fri 09:00-13:00, 14:00-18:00; Sat-Sun off. Exceptions (off unless hours are given): 2026-03-06 09:00-13:00, 14:00-17:00 (Предпраздничный день), 2026-03-07 to 2026-03-09 (8 марта), 2026-04-30 09:00-13:00, 14:00-18:00 (Перед майскими), 2026-05-01 to 2026-05-03 (Майские праздники), 2026-05-09 to 2026-05-11 (9 мая), 2026-06-12 (12 июня).

## Resources

| Resource | Group | Rate | Cost per use |
| --- | --- | --- | --- |
| Ведущий программист | Программирование | 10 | 100 |
| Программист#1 | Программирование | 7 | 50 |
| Программист#2 | Программирование | 7 | 50 |
| Программист#3 | Программирование | 7 | 50 |
| Прогаммист#4 | Программирование | 7 | 50 |
| Системный аналитик | Анализ | 20 | 300 |
| Художник-дизайнер | Дизайн | 8 | 70 |
| Технический писатель | Документация | 5 | 20 |
| Web-дизайнер | Internet | 7 | 50 |
| 3D аниматор | Дизайн | 8 | 70 |
| Мультимедиа-корреспондент | М-медиа | 3 | 20 |
| Наборщик данных#1 | Ввод данных | 2 | 10 |
| Наборщик данных#2 | Ввод данных | 2 | 10 |
| Наборщик данных#3 | Ввод данных | 2 | 10 |
| Наборщик данных#4 | Ввод данных | 2 | 10 |
| Наборщик данных#5 | Ввод данных | 2 | 10 |
| Аренда доп сервера | Аренда | 2 |  |

## Schedule

| ID | WBS | Task | Type | Duration | Start | Finish | Predecessors | Baseline start | Baseline finish | Baseline duration | Total slack | Free slack | Resources | Work | Cost | Baseline cost |
| --- | --- | --- | --- | --- | --- | --- | --- | --- | --- | --- | --- | --- | --- | --- | --- | --- |
| 1 | 1 | Начало проекта | milestone | 0d | 2026-03-02 09:00 | 2026-03-02 09:00 |  | 2026-03-02 09:00 | 2026-03-02 09:00 | 0d | 45.45d | 0d |  |  |  |  |
| 2 | 2 | **Создание интерфейса** |  | 78.57d | 2026-03-02 09:00 | 2026-06-24 15:33 | 1 | 2026-03-02 09:00 | 2026-06-24 15:33 | 78.57d | 0d |  |  | 560h | 5,650 | 5,650 |
| 3 | 2.1 | **Разработка дизайна интерфейса** |  | 25.62d | 2026-03-02 09:00 | 2026-04-07 16:00 |  | 2026-03-02 09:00 | 2026-04-07 16:00 | 25.62d | 45.45d | 0d |  | 320h | 2,770 | 2,770 |
| 4 | 2.1.1 | Разработка 2D графических элементов |  | 3w | 2026-03-02 09:00 | 2026-03-24 13:00 |  | 2026-03-02 09:00 | 2026-03-24 13:00 | 3w | 45.45d | 0d | Художник-дизайнер | 120h | 1,030 | 1,030 |
| 5 | 2.1.2 | Разработка 3D графических элементов |  | 2w | 2026-03-02 09:00 | 2026-03-17 12:00 | 4SS | 2026-03-02 09:00 | 2026-03-17 12:00 | 2w | 45.45d | 0d | 3D аниматор | 80h | 710 | 710 |
| 6 | 2.1.3 | Создание заставки |  | 3w | 2026-03-17 12:00 | 2026-04-07 16:00 | 5 | 2026-03-17 12:00 | 2026-04-07 16:00 | 3w | 45.45d |  | 3D аниматор | 120h | 1,030 | 1,030 |
| 7 | 2.2 | Программирование интерфейса |  | 1.5w | 2026-06-15 10:33 | 2026-06-24 15:33 | 3, 12 | 2026-06-15 10:33 | 2026-06-24 15:33 | 1.5w | 0d |  | Программист#3; Прогаммист#4; Программист#1; Программист#2 | 240h | 1,880 | 1,880 |
| 8 | 3 | **Построение базы объектов** |  | 85.25d | 2026-03-24 14:00 | 2026-07-24 16:00 |  | 2026-03-24 14:00 | 2026-07-24 16:00 | 85.25d | 2.75d |  | Аренда доп сервера | 5650h | 15,390 | 15,390 |
| 9 | 3.1 | Анализ и построение структуры базы объектов |  | 2w | 2026-03-24 14:00 | 2026-04-07 16:00 |  | 2026-03-24 14:00 | 2026-04-07 16:00 | 2w | 2.75d | 0d | Системный аналитик | 80h | 1,900 | 1,900 |
| 10 | 3.2 | Программирование средств обработки базы объектов |  | 3w | 2026-04-07 16:00 | 2026-04-28 16:00 | 9 | 2026-04-07 16:00 | 2026-04-28 16:00 | 3w | 2.75d | 0d | Программист#3; Прогаммист#4 | 240h | 1,780 | 1,780 |
| 11 | 3.3 | Наполнение базы объектов |  | 12w | 2026-04-28 16:00 | 2026-07-24 16:00 | 10 | 2026-04-28 16:00 | 2026-07-24 16:00 | 12w | 2.75d |  | Наборщик данных#1; Наборщик данных#2; Наборщик данных#3; Наборщик данных#4; Наборщик данных#5 | 2400h | 4,850 | 4,850 |
| 12 | 4 | **Создание ядра GIS** |  | 71.07d | 2026-03-02 09:00 | 2026-06-15 10:33 |  | 2026-03-02 09:00 | 2026-06-15 10:33 | 71.07d | 0d |  |  | 1880h | 18,079.33 | 18,079.33 |
| 13 | 4.1 | Анализ и проектирование ядра |  | 3w | 2026-03-02 09:00 | 2026-03-24 13:00 |  | 2026-03-02 09:00 | 2026-03-24 13:00 | 3w | 0d |  | Системный аналитик; Ведущий программист | 240h | 4,000 | 4,000 |
| 14 | 4.2 | Создание модели ядра |  | 2.02w | 2026-03-24 14:00 | 2026-04-07 14:49 | 13 | 2026-03-24 14:00 | 2026-04-07 14:49 | 2.02w | 0d |  | Ведущий программист; Программист#1; Прогаммист#4; Программист#3; Программист#2 | 400h | 3,336.46 | 3,336.46 |
| 15 | 4.3 | Тестирование модели ядра |  | 1w | 2026-04-07 14:49 | 2026-04-14 14:49 | 14 | 2026-04-07 14:49 | 2026-04-14 14:49 | 1w | 0d |  | Программист#1 | 40h | 330 | 330 |
| 16 | 4.4 | Создание рабочей версии ядра |  | 8.12w | 2026-04-14 14:49 | 2026-06-15 10:33 | 15 | 2026-04-14 14:49 | 2026-06-15 10:33 | 8.12w | 0d |  | Программист#1; Ведущий программист; Программист#2; Прогаммист#4; Программист#3 | 1200h | 9,412.87 | 9,412.87 |
| 17 | 5 | Создание мультимедиа – наполнения |  | 6w | 2026-04-07 16:00 | 2026-05-22 15:00 | 3 | 2026-04-07 16:00 | 2026-05-22 15:00 | 6w | 46.88d |  | Мультимедиа-корреспондент | 240h | 740 | 740 |
| 18 | 6 | Создание справочной системы |  | 2w | 2026-07-07 10:33 | 2026-07-21 17:37 | 7 | 2026-07-07 10:33 | 2026-07-21 17:37 | 2w | 5.55d |  | Технический писатель | 80h | 420 | 420 |
| 19 | 7 | **Создание руководства пользователя** |  | 18.5d | 2026-06-09 15:33 | 2026-07-07 10:33 | 7FS-10d | 2026-06-09 15:33 | 2026-07-07 10:33 | 18.5d | 0d |  |  | 160h | 1,010 | 1,010 |
| 20 | 7.1 | Разработка дизайна руководства |  | 1w | 2026-06-09 15:33 | 2026-06-18 10:33 |  | 2026-06-09 15:33 | 2026-06-18 10:33 | 1w | 0d |  | Художник-дизайнер | 40h | 390 | 390 |
| 21 | 7.2 | Написание руководства пользователя |  | 3w | 2026-06-11 15:33 | 2026-07-07 10:33 | 20SS+2d | 2026-06-11 15:33 | 2026-07-07 10:33 | 3w | 0d |  | Технический писатель | 120h | 620 | 620 |
| 22 | 8 | **Создание web – сайта и поддержка** |  | 25.26d | 2026-06-11 15:33 | 2026-07-17 17:37 |  | 2026-06-11 15:33 | 2026-07-17 17:37 | 25.26d | 0d |  |  | 248h | 2,106 | 2,106 |
| 23 | 8.1 | Разработка структуры сайта |  | 1d | 2026-06-11 15:33 | 2026-06-15 15:33 | 21SS | 2026-06-11 15:33 | 2026-06-15 15:33 | 1d | 0d |  | Web-дизайнер | 8h | 106 | 106 |
| 24 | 8.2 | Разработка дизайна сайта |  | 1.45w | 2026-06-15 15:33 | 2026-06-25 14:33 | 23 | 2026-06-15 15:33 | 2026-06-25 14:33 | 1.45w | 0d |  | 3D аниматор; Web-дизайнер; Художник-дизайнер | 120h | 1,110 | 1,110 |
| 25 | 8.3 | Наполнение сайта |  | 3w | 2026-06-25 14:33 | 2026-07-17 17:37 | 24 | 2026-06-25 14:33 | 2026-07-17 17:37 | 3w | 0d |  | Web-дизайнер | 120h | 890 | 890 |
| 26 | 9 | Тестирование сайта |  | 2.51w | 2026-07-10 17:37 | 2026-07-29 14:01 | 22FS-1w | 2026-07-10 17:37 | 2026-07-29 14:01 | 2.51w | 0d |  | Ведущий программист; Программист#1; Программист#2; Прогаммист#4; Программист#3 | 480h | 3,942.1 | 3,942.1 |
| 27 | 10 | Сдача сайта в эксплуатацию | milestone | 0d | 2026-07-29 14:01 | 2026-07-29 14:01 | 26 | 2026-07-29 14:01 | 2026-07-29 14:01 | 0d | 0d |  |  |  |  |  |

| ID | WBS | Task | Type | Duration | Start | Finish | Baseline start | Baseline finish | Baseline duration | Total slack | Constraint | Resources | Work | Cost | Baseline cost |
| --- | --- | --- | --- | --- | --- | --- | --- | --- | --- | --- | --- | --- | --- | --- | --- |
| 28 | 11 | **Совещание** |  | 101d | 2026-03-04 09:00 | 2026-07-29 10:00 | 2026-03-04 09:00 | 2026-07-29 10:00 | 101d | 0d |  |  | 154h | 1,342 | 1,342 |
| 29 | 11.1 | Совещание 1 | manual | 1h | 2026-03-04 09:00 | 2026-03-04 10:00 | 2026-03-04 09:00 | 2026-03-04 10:00 | 1h |  | start no earlier than 2026-03-04 09:00 | 3D аниматор; Web-дизайнер; Ведущий программист; Мультимедиа-корреспондент; Системный аналитик; Технический писатель; Художник-дизайнер | 7h | 61 | 61 |
| 30 | 11.2 | Совещание 2 | manual | 1h | 2026-03-11 09:00 | 2026-03-11 10:00 | 2026-03-11 09:00 | 2026-03-11 10:00 | 1h |  | start no earlier than 2026-03-11 09:00 | 3D аниматор; Web-дизайнер; Ведущий программист; Мультимедиа-корреспондент; Системный аналитик; Технический писатель; Художник-дизайнер | 7h | 61 | 61 |
| 31 | 11.3 | Совещание 3 | manual | 1h | 2026-03-18 09:00 | 2026-03-18 10:00 | 2026-03-18 09:00 | 2026-03-18 10:00 | 1h |  | start no earlier than 2026-03-18 09:00 | 3D аниматор; Web-дизайнер; Ведущий программист; Мультимедиа-корреспондент; Системный аналитик; Технический писатель; Художник-дизайнер | 7h | 61 | 61 |
| 32 | 11.4 | Совещание 4 | manual | 1h | 2026-03-25 09:00 | 2026-03-25 10:00 | 2026-03-25 09:00 | 2026-03-25 10:00 | 1h |  | start no earlier than 2026-03-25 09:00 | 3D аниматор; Web-дизайнер; Ведущий программист; Мультимедиа-корреспондент; Системный аналитик; Технический писатель; Художник-дизайнер | 7h | 61 | 61 |
| 33 | 11.5 | Совещание 5 | manual | 1h | 2026-04-01 09:00 | 2026-04-01 10:00 | 2026-04-01 09:00 | 2026-04-01 10:00 | 1h |  | start no earlier than 2026-04-01 09:00 | 3D аниматор; Web-дизайнер; Ведущий программист; Мультимедиа-корреспондент; Системный аналитик; Технический писатель; Художник-дизайнер | 7h | 61 | 61 |
| 34 | 11.6 | Совещание 6 | manual | 1h | 2026-04-08 09:00 | 2026-04-08 10:00 | 2026-04-08 09:00 | 2026-04-08 10:00 | 1h |  | start no earlier than 2026-04-08 09:00 | 3D аниматор; Web-дизайнер; Ведущий программист; Мультимедиа-корреспондент; Системный аналитик; Технический писатель; Художник-дизайнер | 7h | 61 | 61 |
| 35 | 11.7 | Совещание 7 | manual | 1h | 2026-04-15 09:00 | 2026-04-15 10:00 | 2026-04-15 09:00 | 2026-04-15 10:00 | 1h |  | start no earlier than 2026-04-15 09:00 | 3D аниматор; Web-дизайнер; Ведущий программист; Мультимедиа-корреспондент; Системный аналитик; Технический писатель; Художник-дизайнер | 7h | 61 | 61 |
| 36 | 11.8 | Совещание 8 | manual | 1h | 2026-04-22 09:00 | 2026-04-22 10:00 | 2026-04-22 09:00 | 2026-04-22 10:00 | 1h |  | start no earlier than 2026-04-22 09:00 | 3D аниматор; Web-дизайнер; Ведущий программист; Мультимедиа-корреспондент; Системный аналитик; Технический писатель; Художник-дизайнер | 7h | 61 | 61 |
| 37 | 11.9 | Совещание 9 | manual | 1h | 2026-04-29 09:00 | 2026-04-29 10:00 | 2026-04-29 09:00 | 2026-04-29 10:00 | 1h |  | start no earlier than 2026-04-29 09:00 | 3D аниматор; Web-дизайнер; Ведущий программист; Мультимедиа-корреспондент; Системный аналитик; Технический писатель; Художник-дизайнер | 7h | 61 | 61 |
| 38 | 11.10 | Совещание 10 | manual | 1h | 2026-05-06 09:00 | 2026-05-06 10:00 | 2026-05-06 09:00 | 2026-05-06 10:00 | 1h |  | start no earlier than 2026-05-06 09:00 | 3D аниматор; Web-дизайнер; Ведущий программист; Мультимедиа-корреспондент; Системный аналитик; Технический писатель; Художник-дизайнер | 7h | 61 | 61 |
| 39 | 11.11 | Совещание 11 | manual | 1h | 2026-05-13 09:00 | 2026-05-13 10:00 | 2026-05-13 09:00 | 2026-05-13 10:00 | 1h |  | start no earlier than 2026-05-13 09:00 | 3D аниматор; Web-дизайнер; Ведущий программист; Мультимедиа-корреспондент; Системный аналитик; Технический писатель; Художник-дизайнер | 7h | 61 | 61 |
| 40 | 11.12 | Совещание 12 | manual | 1h | 2026-05-20 09:00 | 2026-05-20 10:00 | 2026-05-20 09:00 | 2026-05-20 10:00 | 1h |  | start no earlier than 2026-05-20 09:00 | 3D аниматор; Web-дизайнер; Ведущий программист; Мультимедиа-корреспондент; Системный аналитик; Технический писатель; Художник-дизайнер | 7h | 61 | 61 |
| 41 | 11.13 | Совещание 13 | manual | 1h | 2026-05-27 09:00 | 2026-05-27 10:00 | 2026-05-27 09:00 | 2026-05-27 10:00 | 1h |  | start no earlier than 2026-05-27 09:00 | 3D аниматор; Web-дизайнер; Ведущий программист; Мультимедиа-корреспондент; Системный аналитик; Технический писатель; Художник-дизайнер | 7h | 61 | 61 |
| 42 | 11.14 | Совещание 14 | manual | 1h | 2026-06-03 09:00 | 2026-06-03 10:00 | 2026-06-03 09:00 | 2026-06-03 10:00 | 1h |  | start no earlier than 2026-06-03 09:00 | 3D аниматор; Web-дизайнер; Ведущий программист; Мультимедиа-корреспондент; Системный аналитик; Технический писатель; Художник-дизайнер | 7h | 61 | 61 |
| 43 | 11.15 | Совещание 15 | manual | 1h | 2026-06-10 09:00 | 2026-06-10 10:00 | 2026-06-10 09:00 | 2026-06-10 10:00 | 1h |  | start no earlier than 2026-06-10 09:00 | 3D аниматор; Web-дизайнер; Ведущий программист; Мультимедиа-корреспондент; Системный аналитик; Технический писатель; Художник-дизайнер | 7h | 61 | 61 |
| 44 | 11.16 | Совещание 16 | manual | 1h | 2026-06-17 09:00 | 2026-06-17 10:00 | 2026-06-17 09:00 | 2026-06-17 10:00 | 1h |  | start no earlier than 2026-06-17 09:00 | 3D аниматор; Web-дизайнер; Ведущий программист; Мультимедиа-корреспондент; Системный аналитик; Технический писатель; Художник-дизайнер | 7h | 61 | 61 |
| 45 | 11.17 | Совещание 17 | manual | 1h | 2026-06-24 09:00 | 2026-06-24 10:00 | 2026-06-24 09:00 | 2026-06-24 10:00 | 1h |  | start no earlier than 2026-06-24 09:00 | 3D аниматор; Web-дизайнер; Ведущий программист; Мультимедиа-корреспондент; Системный аналитик; Технический писатель; Художник-дизайнер | 7h | 61 | 61 |
| 46 | 11.18 | Совещание 18 | manual | 1h | 2026-07-01 09:00 | 2026-07-01 10:00 | 2026-07-01 09:00 | 2026-07-01 10:00 | 1h |  | start no earlier than 2026-07-01 09:00 | 3D аниматор; Web-дизайнер; Ведущий программист; Мультимедиа-корреспондент; Системный аналитик; Технический писатель; Художник-дизайнер | 7h | 61 | 61 |
| 47 | 11.19 | Совещание 19 | manual | 1h | 2026-07-08 09:00 | 2026-07-08 10:00 | 2026-07-08 09:00 | 2026-07-08 10:00 | 1h |  | start no earlier than 2026-07-08 09:00 | 3D аниматор; Web-дизайнер; Ведущий программист; Мультимедиа-корреспондент; Системный аналитик; Технический писатель; Художник-дизайнер | 7h | 61 | 61 |
| 48 | 11.20 | Совещание 20 | manual | 1h | 2026-07-15 09:00 | 2026-07-15 10:00 | 2026-07-15 09:00 | 2026-07-15 10:00 | 1h |  | start no earlier than 2026-07-15 09:00 | 3D аниматор; Web-дизайнер; Ведущий программист; Мультимедиа-корреспондент; Системный аналитик; Технический писатель; Художник-дизайнер | 7h | 61 | 61 |
| 49 | 11.21 | Совещание 21 | manual | 1h | 2026-07-22 09:00 | 2026-07-22 10:00 | 2026-07-22 09:00 | 2026-07-22 10:00 | 1h |  | start no earlier than 2026-07-22 09:00 | 3D аниматор; Web-дизайнер; Ведущий программист; Мультимедиа-корреспондент; Системный аналитик; Технический писатель; Художник-дизайнер | 7h | 61 | 61 |
| 50 | 11.22 | Совещание 22 | manual | 1h | 2026-07-29 09:00 | 2026-07-29 10:00 | 2026-07-29 09:00 | 2026-07-29 10:00 | 1h |  | start no earlier than 2026-07-29 09:00 | 3D аниматор; Web-дизайнер; Ведущий программист; Мультимедиа-корреспондент; Системный аналитик; Технический писатель; Художник-дизайнер | 7h | 61 | 61 |
