# lab_2_3

Schedule from MS Project, 2026-03-02 to 2026-09-17, status date 2026-03-02, costs in ₽.
Команда разработчиков из 16 человек занимается созданием карты города на основе собственного модуля отображения. Проект должен быть завершен в течение 6 месяцев. Бюджет проекта: 50 000 рублей

## Calendars

- Стандартный: Mon-Fri 09:00-13:00, 14:00-18:00; Sat-Sun off. Exceptions (off unless hours are given): 2026-03-06 09:00-13:00, 14:00-17:00 (Предпраздничный день), 2026-03-07 to 2026-03-09 (8 марта), 2026-04-30 09:00-13:00, 14:00-18:00 (Перед майскими), 2026-05-01 to 2026-05-03 (Майские праздники), 2026-05-09 to 2026-05-11 (9 мая), 2026-06-12 (12 июня).

## Resources

| Resource | Group | Rate | Cost per use |
| --- | --- | --- | --- |
| Ведущий программист | Программирование | 10 | 100 |
| Программист#1 | Программирование | 7 | 50 |
| Программист#2 | Программирование | 7 | 50 |
| Программист#3 | Программирование | 7 | 50 |
| Прогаммист#4 | Программирование | 7 | 50 |
| Системный аналитик | Анализ | 20 | 300 |
| Художник-дизайнер | Дизайн | 8 | 70 |
| Технический писатель | Документация | 5 | 20 |
| Web-дизайнер | Internet | 7 | 50 |
| 3D аниматор | Дизайн | 8 | 70 |
| Мультимедиа-корреспондент | М-медиа | 3 | 20 |
| Наборщик данных#1 | Ввод данных | 2 | 10 |
| Наборщик данных#2 | Ввод данных | 2 | 10 |
| Наборщик данных#3 | Ввод данных | 2 | 10 |
| Наборщик данных#4 | Ввод данных | 2 | 10 |
| Наборщик данных#5 | Ввод данных | 2 | 10 |
| Аренда доп сервера | Аренда | 2 |  |

## Schedule

| ID | WBS | Task | Type | Duration | Start | Finish | Predecessors | Total slack | Free slack | Resources | Work | Cost |
| --- | --- | --- | --- | --- | --- | --- | --- | --- | --- | --- | --- | --- |
| 1 | 1 | Начало проекта | milestone | 0d | 2026-03-02 | 2026-03-02 |  | 71d | 0d |  |  |  |
| 2 | 2 | **Анализ и проектирование** |  | 25d | 2026-03-02 | 2026-04-07 |  | 0d |  |  | 640h | 8,670 |
| 3 | 2.1 | **Разработка дизайна интерфейса** |  | 25d | 2026-03-02 | 2026-04-07 | 1 | 71d | 0d |  | 320h | 2,770 |
| 4 | 2.1.1 | Разработка 2D графических элементов |  | 3w | 2026-03-02 | 2026-03-24 |  | 71d | 0d | Художник-дизайнер | 120h | 1,030 |
| 5 | 2.1.2 | Разработка 3D графических элементов |  | 2w | 2026-03-02 | 2026-03-17 | 4SS | 71d | 0d | 3D аниматор | 80h | 710 |
| 6 | 2.1.3 | Создание заставки |  | 3w | 2026-03-17 | 2026-04-07 | 5 | 71d |  | 3D аниматор | 120h | 1,030 |
| 7 | 2.2 | Анализ и построение структуры базы объектов |  | 2w | 2026-03-24 | 2026-04-07 |  | 39d | 0d | Системный аналитик | 80h | 1,900 |
| 8 | 2.3 | Анализ и проектирование ядра |  | 3w | 2026-03-02 | 2026-03-24 |  | 0d |  | Системный аналитик; Ведущий программист | 240h | 4,000 |
| 9 | 3 | **Разработка** |  | 115d | 2026-03-24 | 2026-09-04 |  | 0d |  |  | 7560h | 31,238 |
| 10 | 3.1 | **Построение базы объектов** |  | 75d | 2026-04-07 | 2026-07-24 | 7 | 39d |  | Аренда доп сервера | 5232h | 12,814 |
| 11 | 3.1.1 | Программирование средств обработки базы объектов |  | 3w | 2026-04-07 | 2026-04-28 | 7 | 39d | 0d | Программист#3; Прогаммист#4 | 240h | 1,780 |
| 12 | 3.1.2 | Наполнение базы объектов |  | 12w | 2026-04-28 | 2026-07-24 | 11 | 39d |  | Наборщик данных#1; Наборщик данных#2; Наборщик данных#3; Наборщик данных#4; Наборщик данных#5 | 2400h | 4,850 |
| 13 | 3.2 | **Создание ядра GIS** |  | 81d | 2026-03-24 | 2026-07-20 | 8 | 0d |  |  | 1376h | 12,496 |
| 14 | 3.2.1 | Создание модели ядра |  | 5w | 2026-03-24 | 2026-04-28 | 8 | 0d |  | Ведущий программист; Программист#1 | 400h | 3,550 |
| 15 | 3.2.2 | Тестирование модели ядра |  | 1w | 2026-04-28 | 2026-05-06 | 14 | 0d |  | Программист#1 | 40h | 330 |
| 16 | 3.2.3 | Создание рабочей версии ядра |  | 10w | 2026-05-07 | 2026-07-20 | 15 | 0d |  | Программист#1; Ведущий программист; Программист#2 | 936h | 7,616 |
| 17 | 3.3 | Программирование интерфейса |  | 3w | 2026-07-20 | 2026-08-10 | 3, 13 | 0d |  | Программист#3; Прогаммист#4 | 240h | 1,780 |
| 18 | 3.4 | Создание мультимедиа – наполнения |  | 6w | 2026-04-07 | 2026-05-21 | 3 | 84d |  | Мультимедиа-корреспондент | 240h | 740 |
| 19 | 3.5 | Создание справочной системы |  | 2w | 2026-08-21 | 2026-09-04 | 17 | 9d |  | Технический писатель | 80h | 420 |
| 20 | 3.6 | **Создание руководства пользователя** |  | 17d | 2026-07-27 | 2026-08-19 | 17FS-10d | 0d |  |  | 160h | 1,010 |
| 21 | 3.6.1 | Написание руководства пользователя |  | 3w | 2026-07-29 | 2026-08-19 | 22SS+2d | 0d |  | Технический писатель | 120h | 620 |
| 22 | 3.6.2 | Разработка дизайна руководства |  | 1w | 2026-07-27 | 2026-08-03 |  | 0d |  | Художник-дизайнер | 40h | 390 |
| 23 | 3.7 | **Создание web – сайта и поддержка** |  | 21d | 2026-07-29 | 2026-08-27 |  | 0d |  |  | 232h | 1,978 |
| 24 | 3.7.1 | Разработка структуры сайта |  | 1d | 2026-07-29 | 2026-07-30 | 21SS | 0d |  | Web-дизайнер | 8h | 106 |
| 25 | 3.7.2 | Разработка дизайна сайта |  | 1w | 2026-07-30 | 2026-08-06 | 24 | 0d |  | 3D аниматор; Web-дизайнер; Художник-дизайнер | 104h | 982 |
| 26 | 3.7.3 | Наполнение сайта |  | 3w | 2026-08-06 | 2026-08-27 | 25 | 0d |  | Web-дизайнер | 120h | 890 |

| ID | WBS | Task | Type | Duration | Start | Finish | Predecessors | Total slack | Resources | Work | Cost |
| --- | --- | --- | --- | --- | --- | --- | --- | --- | --- | --- | --- |
| 27 | 4 | **Тестирование** |  | 20d | 2026-08-20 | 2026-09-17 |  | 0d |  | 480h | 4,040 |
| 28 | 4.1 | Тестирование сайта |  | 4w | 2026-08-20 | 2026-09-17 | 23FS-1w | 0d | Ведущий программист; Программист#2; Программист#1 | 480h | 4,040 |
| 29 | 5 | Сдача сайта в эксплуатацию | milestone | 0d | 2026-09-17 | 2026-09-17 | 28 | 0d |  |  |  |
